# EAP

Schedule from MS Project, 2017-03-23 to 2017-07-07.

## Calendars

- Padrão: Mon-Fri 09:00-12:00, 13:00-18:00; Sat-Sun off.

## Resources

| Resource |
| --- |
| Natan |
| Tiago |
| Homero |

## Schedule

| ID | WBS | Task | Duration | Start | Finish | Predecessors | Total slack | Free slack | Resources | Work |
| --- | --- | --- | --- | --- | --- | --- | --- | --- | --- | --- |
| 1 | 1 | **Projeto TalkUniversity** | 76.62d? | 2017-03-23 | 2017-07-07 |  | 0d |  |  | 625h |
| 2 | 1.1 | **Prospecção** | 5.25d? | 2017-03-23 | 2017-03-30 |  | 0d |  |  | 32h |
| 3 | 1.1.1 | **EAP** | 1.25d? | 2017-03-23 | 2017-03-24 |  | 0d |  |  | 10h |
| 4 | 1.1.1.1 | Definir Estrutura Projeto | 0.5d? | 2017-03-23 | 2017-03-23 |  | 0d |  | Natan | 4h |
| 5 | 1.1.1.2 | Redigir EAP | 0.75d? | 2017-03-23 | 2017-03-24 | 4 | 0d |  | Natan | 6h |
| 6 | 1.1.2 | **Proposta Técnica** | 4d? | 2017-03-24 | 2017-03-30 | 5 | 0d |  |  | 22h |
| 7 | 1.1.2.1 | Reunião para Definição | 1d? | 2017-03-24 | 2017-03-27 |  | 0d |  | Natan [16.7%]; Tiago [33.3%]; Homero [33.3%] | 4h |
| 8 | 1.1.2.2 | Redigir Proposta Técnica | 1.5d? | 2017-03-27 | 2017-03-28 | 7 | 0d |  | Natan | 12h |
| 9 | 1.1.2.3 | Revisar Proposta Técnica | 1.5d? | 2017-03-28 | 2017-03-30 | 8 | 0d |  | Tiago [25%]; Homero [25%] | 6h |
| 10 | 1.2 | **Análise** | 17.25d? | 2017-03-30 | 2017-04-24 | 9 | 0d |  |  | 114h |
| 11 | 1.2.1 | **Documento de Requisitos** | 8.5d? | 2017-03-30 | 2017-04-11 |  | 0d |  |  | 68h |
| 12 | 1.2.1.1 | Reunião Definitiva para definição | 1d? | 2017-03-30 | 2017-03-31 |  | 0d |  | Natan [33.3%]; Tiago [33.3%]; Homero [33.3%] | 8h |
| 13 | 1.2.1.2 | Redigir Documento de Requisitos | 6d? | 2017-03-31 | 2017-04-10 | 12 | 0d |  | Tiago | 48h |
| 14 | 1.2.1.3 | Revisar Documento de Requisitos | 1.5d? | 2017-04-10 | 2017-04-11 | 13 | 0d |  | Homero | 12h |
| 15 | 1.2.2 | **Estimativa de Tamanho Preliminar** | 5d? | 2017-04-11 | 2017-04-18 | 14 | 0d |  |  | 18h |
| 16 | 1.2.2.1 | Analisar DRE | 3d? | 2017-04-11 | 2017-04-14 |  | 0d |  | Homero [25%] | 6h |
| 17 | 1.2.2.2 | Redigir Estimativa | 1d? | 2017-04-14 | 2017-04-17 | 16 | 0d |  | Homero | 8h |
| 18 | 1.2.2.3 | Revisar Estimativa | 1d? | 2017-04-17 | 2017-04-18 | 17 | 0d |  | Natan [50%] | 4h |
| 19 | 1.2.3 | **Cronograma Preliminar** | 3.75d? | 2017-04-18 | 2017-04-24 | 18 | 0d |  |  | 28h |
| 20 | 1.2.3.1 | Analisar Estimativa | 1d? | 2017-04-18 | 2017-04-20 |  | 0d |  | Natan [50%] | 4h |
| 21 | 1.2.3.2 | Definir Responsáveis pelas Tarefas | 1.5d? | 2017-04-18 | 2017-04-20 |  | 0.75d |  | Natan | 12h |
| 22 | 1.2.3.3 | Gerar Cronograma | 1.5d? | 2017-04-21 | 2017-04-24 | 21, 20 | 0d |  | Natan | 12h |
| 23 | 1.3 | **Planejamento** | 20.5d? | 2017-04-24 | 2017-05-22 | 22 | 0d |  |  | 46h |
| 24 | 1.3.1 | **Estimativa Tamanho Definitivo** | 20.5d? | 2017-04-24 | 2017-05-22 |  | 33.62d |  |  | 30h |
| 25 | 1.3.1.1 | Reunião de Definição | 2d? | 2017-04-24 | 2017-04-27 |  | 33.62d | 0d | Natan [33.3%]; Tiago [33.3%]; Homero [33.3%] | 8h |
| 26 | 1.3.1.2 | Redigir Estimativa Definitiva | 2.25d? | 2017-04-27 | 2017-05-19 | 25 | 33.62d | 0d | Homero | 18h |
| 27 | 1.3.1.3 | Revisar Estimativa Definitiva | 1d? | 2017-05-22 | 2017-05-22 | 26 | 33.62d |  | Natan [50%] | 4h |

| ID | WBS | Task | Duration | Start | Finish | Predecessors | Total slack | Resources | Work |
| --- | --- | --- | --- | --- | --- | --- | --- | --- | --- |
| 28 | 1.3.2 | **Cronograma Definitivo** | 2d? | 2017-04-24 | 2017-04-26 |  | 0d |  | 16h |
| 29 | 1.3.2.1 | Alterar Cronograma Preliminar | 1d? | 2017-04-24 | 2017-04-25 |  | 0d | Natan | 8h |
| 30 | 1.3.2.2 | Revisar Cronograma Definitivo | 1d? | 2017-04-25 | 2017-04-26 | 29 | 0d | Tiago | 8h |
| 31 | 1.4 | **Desenvolvimento** | 45.75d? | 2017-04-26 | 2017-06-29 | 30 | 0d |  | 386h |
| 32 | 1.4.1 | **Código-Fonte** | 45.75d? | 2017-04-26 | 2017-06-29 |  | 0d |  | 386h |
| 33 | 1.4.1.1 | Implementar RFs | 21d? | 2017-04-26 | 2017-05-25 |  | 0d | Tiago [33.3%]; Natan [33.3%]; Homero [33.3%] | 168h |
| 34 | 1.4.1.2 | Implementar Regras de Negócio | 12.25d? | 2017-05-25 | 2017-06-12 | 33 | 0d | Tiago [50%]; Natan [50%] | 98h |
| 35 | 1.4.1.3 | Implementar parte gráfica | 6.88d? | 2017-06-12 | 2017-06-21 | 34 | 0d | Natan [33.3%]; Tiago [33.3%]; Homero [33.3%] | 55h |
| 36 | 1.4.1.4 | Revisar Código | 2.5d? | 2017-06-21 | 2017-06-26 | 35 | 9.5d | Tiago [50%]; Homero [50%] | 20h |
| 37 | 1.4.1.5 | Testes | 5.62d? | 2017-06-21 | 2017-06-29 | 35 | 0d | Natan [50%]; Tiago [50%] | 45h |
| 38 | 1.5 | **Fechamento** | 6.38d? | 2017-06-29 | 2017-07-07 | 37 | 0d |  | 47h |
| 39 | 1.5.1 | **Documentação** | 4.38d? | 2017-06-29 | 2017-07-05 |  | 0d |  | 35h |
| 40 | 1.5.1.1 | Revisar Funcionalidades | 1.25d? | 2017-06-29 | 2017-06-30 |  | 0d | Natan | 10h |
| 41 | 1.5.1.2 | Redigir Documentação do código | 3.12d? | 2017-06-30 | 2017-07-05 | 40 | 0d | Tiago [50%]; Homero [50%] | 25h |
| 42 | 1.5.2 | **Relatório lições aprendidas** | 2d? | 2017-07-05 | 2017-07-07 | 41 | 0d |  | 12h |
| 43 | 1.5.2.1 | Redigir relatório | 1d? | 2017-07-05 | 2017-07-06 |  | 0d | Natan | 8h |
| 44 | 1.5.2.2 | Revisar relatório | 1d? | 2017-07-06 | 2017-07-07 | 43 | 0d | Tiago [50%] | 4h |
